# Chip Design

Schedule from MS Project, 2015-05-14 to 2016-05-04, scheduled back from the finish, A marks actual dates.

## Calendars

- Standard: Mon-Fri 08:00-12:00, 13:00-17:00; Sat-Sun off.

## Resources

| Resource |
| --- |
| Zach Nelson |
| Kevin Cao |
| Dhruvit Naik |
| Whitley Forman |
| Julie Swift |
| Dr |
| Ian Patel |

## Schedule

| ID | WBS | Task | Type | Duration | Start | Finish | Predecessors | Complete | Actual finish | Constraint | Resources | Work | Actual work |
| --- | --- | --- | --- | --- | --- | --- | --- | --- | --- | --- | --- | --- | --- |
| 1 | 1 | **System Design** |  | 88d | 2015-05-14 A | 2015-09-14 |  | 100% | 2015-09-16 | as late as possible | Dhruvit Naik; Julie Swift; Kevin Cao; Whitley Forman; Zach Nelson | 9432h | 9432h |
| 2 | 1.1 | General Planning | manual | 26d | 2015-05-14 A | 2015-06-18 A |  | 100% |  |  | Dhruvit Naik; Julie Swift; Kevin Cao; Whitley Forman; Zach Nelson | 1040h | 1040h |
| 3 | 1.2 | Complete I2S In Document | manual | 60d | 2015-06-18 A | 2015-09-09 A |  | 100% |  |  | Zach Nelson | 480h | 480h |
| 4 | 1.3 | Complete I2S Out Document | manual | 44d | 2015-07-11 A | 2015-09-09 A |  | 100% |  |  | Kevin Cao | 352h | 352h |
| 5 | 1.4 | Complete Filter Document | manual | 60d | 2015-06-18 A | 2015-09-09 A |  | 100% |  |  | Dhruvit Naik | 480h | 480h |
| 6 | 1.5 | Complete I2C Document | manual | 60d | 2015-06-18 A | 2015-09-09 A |  | 100% |  |  | Whitley Forman | 480h | 480h |
| 7 | 1.6 | Complete Register Document | manual | 60d | 2015-06-18 A | 2015-09-09 A |  | 100% |  |  | Julie Swift | 480h | 480h |
| 8 | 1.7 | Finish System Design | milestone, manual | 0d | 2015-09-09 A | 2015-09-09 A |  | 100% |  |  | Dhruvit Naik; Julie Swift; Kevin Cao; Whitley Forman; Zach Nelson |  |  |
| 9 | 1.8 | Document System in CORE | manual | 60d | 2015-06-18 A | 2015-09-09 A |  | 100% |  |  | Dhruvit Naik; Julie Swift; Kevin Cao; Whitley Forman; Zach Nelson | 2400h | 2400h |
| 10 | 1.9 | RTS/RTR and XFC Protocols | manual | 7d | 2015-09-08 A | 2015-09-16 A |  | 100% |  | as late as possible | Zach Nelson | 56h | 56h |
| 11 | 1.10 | Create a Detailed Schedule | manual | 9d | 2015-09-02 A | 2015-09-14 A |  | 100% |  |  | Zach Nelson | 72h | 72h |
| 12 | 1.11 | Install Microsoft Project | manual | 9d | 2015-09-02 A | 2015-09-14 A |  | 100% |  | as late as possible | Zach Nelson | 72h | 72h |
| 13 | 2 | **Verilog RTL Coding** |  | 85d | 2015-09-10 A | 2016-01-06 A | 1 | 100% |  | as late as possible | Dhruvit Naik; Julie Swift; Kevin Cao; Whitley Forman; Zach Nelson | 8760h | 8760h |
| 14 | 2.1 | **Create i2si.v** |  | 38d | 2015-09-10 A | 2015-10-31 A |  | 100% |  | as late as possible | Kevin Cao; Zach Nelson | 1176h | 1176h |
| 15 | 2.1.1 | Create and Test i2si_fifo.v | manual | 7d | 2015-09-10 A | 2015-09-18 A |  | 100% |  |  | Zach Nelson | 56h | 56h |
| 16 | 2.1.2 | Create and Test i2si_deserializer.v | manual | 11d | 2015-09-16 A | 2015-09-30 A |  | 100% |  |  | Kevin Cao | 88h | 88h |
| 17 | 2.1.3 | Create and Test i2si_bist.v | manual | 11d | 2015-09-16 A | 2015-09-30 A |  | 100% |  |  | Zach Nelson | 88h | 88h |
| 18 | 2.1.4 | Create i2si.v Top-Level | manual | 13d | 2015-10-05 A | 2015-10-21 A | 15, 16, 17 | 100% |  | as late as possible | Kevin Cao; Zach Nelson | 208h | 208h |
| 19 | 2.1.5 | Test i2si.v | manual | 8d | 2015-10-22 A | 2015-10-31 A | 18 | 100% |  | as late as possible | Kevin Cao; Zach Nelson | 128h | 128h |
| 20 | 2.2 | **Create i2so.v** |  | 33d | 2015-09-10 A | 2015-10-24 |  | 100% | 2015-10-31 | as late as possible | Kevin Cao; Zach Nelson | 1024h | 1024h |
| 21 | 2.2.1 | Create and Test i2so_fifo.v | manual | 10d | 2015-09-10 A | 2015-09-23 A |  | 100% |  |  | Zach Nelson | 80h | 80h |
| 22 | 2.2.2 | Create and Test i2so_serializer.v | manual | 16d | 2015-09-16 A | 2015-10-07 A |  | 100% |  | finish no later than 2015-10-07 | Kevin Cao | 128h | 128h |
| 23 | 2.2.3 | Create i2so.v Top-Level | manual | 10d | 2015-10-08 A | 2015-10-21 A | 21, 22 | 100% |  | as late as possible | Kevin Cao; Zach Nelson | 160h | 160h |
| 24 | 2.2.4 | Test i2so.v | manual | 8d | 2015-10-22 A | 2015-10-31 A | 23 | 100% |  | as late as possible | Kevin Cao; Zach Nelson | 128h | 128h |

| ID | WBS | Task | Type | Duration | Start | Finish | Predecessors | Complete | Actual finish | Constraint | Resources | Work | Actual work |
| --- | --- | --- | --- | --- | --- | --- | --- | --- | --- | --- | --- | --- | --- |
| 25 | 2.3 | **Create filter.v** |  | 37d | 2015-09-11 A | 2015-10-31 A |  | 100% |  | as late as possible | Dhruvit Naik | 744h | 744h |
| 26 | 2.3.1 | Create and Test filter_convolution.v | manual | 11d | 2015-09-14 A | 2015-09-28 A |  | 100% |  | as late as possible | Dhruvit Naik | 88h | 88h |
| 27 | 2.3.2 | Create and Test filter_accumulator.v | manual | 11d | 2015-09-18 A | 2015-10-02 A |  | 100% |  | as late as possible | Dhruvit Naik | 88h | 88h |
| 28 | 2.3.3 | Create and Test filter_fifo.v | manual | 11d | 2015-09-23 A | 2015-10-07 A |  | 100% |  | as late as possible | Dhruvit Naik | 88h | 88h |
| 29 | 2.3.4 | Create and Test filter_round_shift_clip.v | manual | 11d | 2015-10-02 A | 2015-10-16 A |  | 100% |  | as late as possible | Dhruvit Naik | 88h | 88h |
| 30 | 2.3.5 | Create filter.v Top-Level | manual | 4d | 2015-10-17 A | 2015-10-21 A | 26, 27, 28, 29 | 100% |  | as late as possible | Dhruvit Naik | 32h | 32h |
| 31 | 2.3.6 | Test filter.v | manual | 8d | 2015-10-22 A | 2015-10-31 A |  | 100% |  | as late as possible | Dhruvit Naik | 64h | 64h |
| 32 | 2.4 | **Create register.v** |  | 37d | 2015-09-10 A | 2015-10-30 |  | 100% | 2016-01-06 | as late as possible | Julie Swift | 1184h | 1184h |
| 33 | 2.4.1 | Create and Test register_trig_gen.v | manual | 25d | 2015-09-10 A | 2015-10-14 A |  | 100% |  | as late as possible | Julie Swift | 200h | 200h |
| 34 | 2.4.2 | Create register.v Top-Level | manual | 25d | 2015-09-10 A | 2015-10-14 A |  | 100% |  | as late as possible | Julie Swift | 200h | 200h |
| 35 | 2.4.3 | Test register.v | manual | 60d | 2015-10-15 A | 2016-01-06 A |  | 100% |  | as late as possible | Julie Swift | 488h | 488h |
| 36 | 2.5 | **Create i2c_slave.v** |  | 37d | 2015-09-10 A | 2015-10-30 |  | 100% | 2015-10-31 | as late as possible | Whitley Forman | 928h | 928h |
| 37 | 2.5.1 | Create and Test i2c_slave_deserializer.v | manual | 15d | 2015-09-10 A | 2015-09-30 A |  | 100% |  | as late as possible | Whitley Forman | 120h | 120h |
| 38 | 2.5.2 | Create and Test i2c_slave_sequencer.v | manual | 20d | 2015-09-17 A | 2015-10-14 A |  | 100% |  | as late as possible | Whitley Forman | 160h | 160h |
| 39 | 2.5.3 | Create and Test i2c_slave_writetoreg.v | manual | 20d | 2015-09-17 A | 2015-10-14 A |  | 100% |  | as late as possible | Whitley Forman | 160h | 160h |
| 40 | 2.5.4 | Create and Test i2c_slave_serializer.v | manual | 10d | 2015-10-08 A | 2015-10-21 A |  | 100% |  | as late as possible | Whitley Forman | 80h | 80h |
| 41 | 2.5.5 | Create i2c_slave.v Top Level | manual | 9d | 2015-10-14 A | 2015-10-26 A |  | 100% |  | as late as possible | Whitley Forman | 72h | 72h |
| 42 | 2.5.6 | Test i2c_slave.v | manual | 5d | 2015-10-27 A | 2015-10-31 A |  | 100% |  | as late as possible | Whitley Forman | 40h | 40h |
| 43 | 2.6 | Create chip.v | manual | 33d | 2015-09-16 A | 2015-10-30 A |  | 100% |  |  | Zach Nelson | 264h | 264h |
| 44 | 2.7 | Finish RTL Design | milestone, manual | 0d | 2015-10-30 A | 2015-10-30 A |  | 100% |  |  | Dhruvit Naik; Julie Swift; Kevin Cao; Whitley Forman; Zach Nelson |  |  |
| 45 | 3 | **Install EDA Tools** |  | 116d | 2015-09-02 A | 2016-02-10 A |  | 100% |  | as late as possible | Dhruvit Naik; Julie Swift | 2240h | 2240h |
| 46 | 3.1 | Determine EDA Requriments | manual | 4d | 2015-09-02 A | 2015-09-06 A |  | 100% |  |  | Dhruvit Naik; Julie Swift | 64h | 64h |
| 47 | 3.2 | Install OS | manual | 13d | 2015-09-09 A | 2015-09-25 A | 46 | 100% |  |  | Dhruvit Naik; Julie Swift | 208h | 208h |
| 48 | 3.3 | Install EDA Tool | manual | 2d | 2015-09-28 A | 2015-09-29 A | 47 | 100% |  |  | Dhruvit Naik; Julie Swift | 32h | 32h |
| 49 | 3.4 | Install Libraries | manual | 12d | 2016-01-26 A | 2016-02-10 A |  | 100% |  | as late as possible |  |  |  |
| 50 | 3.5 | Create a Simple Test Case | manual | 5d | 2015-09-29 A | 2015-10-05 A | 48 | 100% |  |  | Dhruvit Naik; Julie Swift | 80h | 80h |

| ID | WBS | Task | Type | Duration | Start | Finish | Predecessors | Complete | Constraint | Resources | Work | Actual work |
| --- | --- | --- | --- | --- | --- | --- | --- | --- | --- | --- | --- | --- |
| 51 | 4 | **Simulation/Verification** |  | 61d | 2015-12-09 A | 2016-03-02 A |  | 100% | as late as possible |  |  |  |
| 52 | 4.1 | Test i2s_in.v | manual | 31d | 2015-12-09 A | 2016-01-20 A |  | 100% | as late as possible |  |  |  |
| 53 | 4.2 | Test i2s_out.v | manual | 31d | 2015-12-09 A | 2016-01-20 A |  | 100% | as late as possible |  |  |  |
| 54 | 4.3 | Test filter.v | manual | 31d | 2015-12-09 A | 2016-01-20 A |  | 100% | as late as possible |  |  |  |
| 55 | 4.4 | Test chip_reg.v | manual | 31d | 2015-12-09 A | 2016-01-20 A |  | 100% | as late as possible |  |  |  |
| 56 | 4.5 | Test i2c.v | manual | 31d | 2015-12-09 A | 2016-01-20 A |  | 100% | as late as possible |  |  |  |
| 57 | 4.6 | Test Control Flow Subsystem | manual | 27d | 2016-01-26 A | 2016-03-02 A |  | 100% | as late as possible |  |  |  |
| 58 | 4.7 | Test Data Flow Subsystem | manual | 27d | 2016-01-26 A | 2016-03-02 A |  | 100% | as late as possible |  |  |  |
| 59 | 4.8 | Test chip.v | manual | 27d | 2016-01-26 A | 2016-03-02 A |  | 100% | as late as possible |  |  |  |
| 60 | 5 | **Synthesis** |  | 39d | 2016-01-15 A | 2016-03-09 A |  | 100% | as late as possible |  |  |  |
| 61 | 5.1 | Synthesize i2s_in.v | manual | 19d | 2016-01-15 A | 2016-02-10 A |  | 100% | as late as possible |  |  |  |
| 62 | 5.2 | Syntehsize i2s_out.v | manual | 19d | 2016-01-15 A | 2016-02-10 A |  | 100% | as late as possible |  |  |  |
| 63 | 5.3 | Synthesize filter.v | manual | 19d | 2016-01-15 A | 2016-02-10 A |  | 100% | as late as possible |  |  |  |
| 64 | 5.4 | Synthesize chip_reg.v | manual | 19d | 2016-01-15 A | 2016-02-10 A |  | 100% | as late as possible |  |  |  |
| 65 | 5.5 | Synthesize i2c.v | manual | 19d | 2016-01-15 A | 2016-02-10 A |  | 100% | as late as possible |  |  |  |
| 66 | 5.6 | Synthesize chip.v | manual | 32d | 2016-01-26 A | 2016-03-09 A |  | 100% | as late as possible |  |  |  |
| 67 | 6 | **FPGA Implementation** |  | 121d | 2015-10-21 A | 2016-04-06 A |  | 100% | as late as possible |  | 408h | 408h |
| 68 | 6.1 | Research FPGA's | manual | 5d | 2015-10-21 A | 2015-10-27 A |  | 100% | as late as possible |  |  |  |
| 69 | 6.2 | Purchase FPGA | manual | 2d | 2015-10-28 A | 2015-10-29 A | 68 | 100% |  |  |  |  |
| 70 | 6.3 | PSoC for I2S Stream | manual | 51d | 2015-11-18 A | 2016-01-27 A |  | 100% | as late as possible | Ian Patel | 408h | 408h |
| 71 | 6.4 | Implement Design on FPGA | manual | 42d | 2016-01-26 A | 2016-03-23 A |  | 100% | as late as possible |  |  |  |
| 72 | 6.5 | Test FPGA | manual | 21d | 2016-03-09 A | 2016-04-06 A |  | 100% | as late as possible |  |  |  |
| 73 | 7 | Physical Design | manual | 31d | 2016-03-16 A | 2016-04-27 A |  | 100% | as late as possible |  |  |  |
| 74 | 8 | **Database for MOSIS** |  | 44d | 2016-03-06 A | 2016-05-04 A |  | 100% | as late as possible |  | 1760h | 1760h |
| 75 | 8.1 | MOSIS Fabrication Deadline | manual | 44d | 2016-03-06 A | 2016-05-04 A |  | 100% | as late as possible | Dhruvit Naik; Julie Swift; Kevin Cao; Whitley Forman; Zach Nelson | 1760h | 1760h |

| ID | WBS | Task | Type | Duration | Start | Finish | Complete | Constraint | Resources | Work | Actual work |
| --- | --- | --- | --- | --- | --- | --- | --- | --- | --- | --- | --- |
| 76 | 9 | **Documentation** |  | 163d | 2015-09-21 A | 2016-05-04 A | 100% | as late as possible |  | 280h | 280h |
| 77 | 9.1 | Create Web Page | manual | 10d | 2015-09-21 A | 2015-10-02 A | 100% | as late as possible | Kevin Cao | 80h | 80h |
| 78 | 9.2 | Write Final Report and Presentation | manual | 5d | 2015-11-26 A | 2015-12-02 A | 100% | as late as possible | Dhruvit Naik; Julie Swift; Kevin Cao; Whitley Forman; Zach Nelson | 200h | 200h |
| 79 | 9.3 | TCF Poster | milestone, manual | 0d | 2016-03-19 A | 2016-03-19 A | 100% | as late as possible |  |  |  |
| 80 | 9.4 | Final Presentation and Report II | milestone, manual | 0d | 2016-05-04 A | 2016-05-04 A | 100% | as late as possible |  |  |  |
